# 220kV朗吟变电站150MW/600MWh构网型储能涉网试验计划

How a schedule from a web Gantt chart changed from version to version. A marks actual dates.

## Version 1 (saved 2026-01-18)

| ID | WBS | Task | Duration | Start | Finish |
| --- | --- | --- | --- | --- | --- |
| 2 | 1 | **涉网试验（常规试验）** | 43d | 2026-02-10 | 2026-03-24 |
| 3 |  | 有功功率调节能力测试 | 2d | 2026-02-10 | 2026-02-11 |
| 4 |  | 无功功率调节能力测试 | 2d | 2026-02-12 | 2026-02-13 |
| 5 |  | 功率因数调节能力测试 | 4d | 2026-03-02 | 2026-03-05 |
| 6 |  | 过载能力测试 | 2d | 2026-03-06 | 2026-03-07 |
| 7 |  | 调节转换时间测试 | 2d | 2026-03-08 | 2026-03-09 |
| 8 |  | 额定能量级转换效率测试 | 4d | 2026-03-10 | 2026-03-13 |
| 9 |  | 电能质量测试 | 2d | 2026-03-14 | 2026-03-15 |
| 10 | 2 | **涉网试验-构网试验（单元级+多元级）** | 59d | 2026-03-23 | 2026-05-20 |
| 11 |  | 高电压穿越能力测试 | 4d | 2026-03-23 | 2026-03-26 |
| 12 |  | 低电压穿越能力测试 | 4d | 2026-03-27 | 2026-03-30 |
| 13 |  | 连续低电压穿越能力测试 | 4d | 2026-03-31 | 2026-04-03 |
| 14 |  | 连续低高电压穿越能力测试 | 4d | 2026-04-04 | 2026-04-07 |
| 15 |  | 过载能力 | 4d | 2026-04-08 | 2026-04-11 |
| 16 |  | 一次调频 | 4d | 2026-04-12 | 2026-04-15 |
| 17 |  | 惯量响应 | 4d | 2026-04-16 | 2026-04-19 |
| 18 |  | 电压适应性测试 | 4d | 2026-04-20 | 2026-04-23 |
| 19 |  | 频率适应性测试 | 4d | 2026-04-24 | 2026-04-27 |
| 20 |  | 阻尼控制 | 5d | 2026-04-28 | 2026-05-02 |
| 21 |  | 相角跳变 | 5d | 2026-05-03 | 2026-05-07 |
| 22 |  | 跟/构网模式切换 | 4d | 2026-05-08 | 2026-05-11 |
| 23 |  | 空载零起升压试验 | 3d | 2026-05-12 | 2026-05-14 |
| 24 |  | 电压阶跃小扰动试验 | 3d | 2026-05-15 | 2026-05-17 |
| 25 |  | 黑启动测试 | 3d | 2026-05-18 | 2026-05-20 |
| 26 | 3 | **涉网试验-跟构网整站联合运行测试** | 6d | 2026-05-21 | 2026-05-26 |
| 27 |  | AGC及有功功率测试 | 2d | 2026-05-21 | 2026-05-22 |
| 28 |  | AVC及无功功率测试 | 2d | 2026-05-23 | 2026-05-24 |
| 29 |  | 跟构网模式切换测试 | 2d | 2026-05-25 | 2026-05-26 |

## Version 2 (saved 2026-01-18)

Last finish stays 2026-05-26.

Changed:

| ID | Task | Finish | Duration |
| --- | --- | --- | --- |
| 27 | AGC及有功功率测试 | 2026-05-22 → 2026-05-23 (+1d) | 2d → 3d |
| 28 | AVC及无功功率测试 | 2026-05-24 → 2026-05-25 (+1d) | 2d → 3d |

## Version 3 (saved 2026-01-18)

Last finish 2026-05-26 → 2026-05-29 (+3d).

Changed:

| ID | Task | Start | Finish | Duration |
| --- | --- | --- | --- | --- |
| 26 | **涉网试验-跟构网整站联合运行测试** |  | 2026-05-26 → 2026-05-29 (+3d) | 6d → 9d |
| 28 | AVC及无功功率测试 | 2026-05-23 → 2026-05-24 (+1d) | 2026-05-25 → 2026-05-26 (+1d) |  |
| 29 | 跟构网模式切换测试 | 2026-05-25 → 2026-05-27 (+2d) | 2026-05-26 → 2026-05-29 (+3d) | 2d → 3d |

## Version 4 (saved 2026-01-18)

Last finish 2026-05-29 → 2026-05-26 (-3d).

Changed:

| ID | Task | Start | Finish | Duration |
| --- | --- | --- | --- | --- |
| 26 | **涉网试验-跟构网整站联合运行测试** |  | 2026-05-29 → 2026-05-26 (-3d) | 9d → 6d |
| 28 | AVC及无功功率测试 | 2026-05-24 → 2026-05-23 (-1d) | 2026-05-26 → 2026-05-25 (-1d) |  |
| 29 | 跟构网模式切换测试 | 2026-05-27 → 2026-05-25 (-2d) | 2026-05-29 → 2026-05-26 (-3d) | 3d → 2d |

## Version 5 (saved 2026-01-18)

Last finish stays 2026-05-26.

Changed:

| ID | Task | Start | Finish |
| --- | --- | --- | --- |
| 28 | AVC及无功功率测试 | 2026-05-23 → 2026-05-24 (+1d) | 2026-05-25 → 2026-05-26 (+1d) |

## Version 6 (saved 2026-01-18)

Last finish 2026-05-26 → 2026-05-29 (+3d).

Changed:

| ID | Task | Start | Finish | Duration |
| --- | --- | --- | --- | --- |
| 26 | **涉网试验-跟构网整站联合运行测试** |  | 2026-05-26 → 2026-05-29 (+3d) | 6d → 9d |
| 29 | 跟构网模式切换测试 | 2026-05-25 → 2026-05-27 (+2d) | 2026-05-26 → 2026-05-29 (+3d) | 2d → 3d |
